# La-Mexicana(1)

Schedule from MS Project, 2018-02-02 to 2018-04-06, costs in $, A marks actual dates.
Hewlett-Packard

## Calendars

- Estándar: Mon-Fri 09:00-13:00, 15:00-19:00; Sat-Sun off.
- La Mexicana: Mon-Fri 08:00-16:00; Sat-Sun off. Exceptions (off unless hours are given): 2018-02-05 (Día de la Constitución), 2018-03-19 (Natalicio de Benito Juárez), 2018-03-26 to 2018-03-31 (Semana Santa).

## Resources

| Resource | Rate |
| --- | --- |
| Project Manager | 113 |
| Analyst | 100 |
| Designer | 94 |
| Programmer3 | 94 |
| Tester | 88 |
| Programmer2 | 94 |
| Programmer1 | 94 |
| Light | 5 |
| Computer (Wastage) | 8 |
| Sheets | 0.5 |
| Pen | 3 |
| Transport | 20 |
| Internet and telephone service | 13 |
| Notebook | 0.15 |
| Printer (Wastage) | 8.5 |
| Soap | 1.5 |
| Drinking water | 2 |
| Toilet paper | 0.8 |
| Water service | 0.5 |
| Ink | 6 |
| Fan (Wastage) | 0.5 |
| Telephone (Wastage) | 0.5 |
| Chair (Wastage) | 3 |
| Table (Wastage) | 4 |
| Microsoft Office package | 16 |
| Adobe package | 12 |
| IDE |  |
| SGBD |  |

## Schedule

| ID | WBS | Task | Type | Duration | Start | Finish | Predecessors | Complete | Remaining | Total slack | Free slack | Constraint | Calendar | Resources | Work | Actual work | Cost | Actual cost |
| --- | --- | --- | --- | --- | --- | --- | --- | --- | --- | --- | --- | --- | --- | --- | --- | --- | --- | --- |
| 1 | 1 | **La Mexicana** |  | 46d | 2018-02-02 A | 2018-04-06 |  | 1% | 45.4d | 0d |  |  |  |  | 461h | 6h | 45,694 | 678 |
| 2 | 1.1 | **Initiaton** |  | 1d | 2018-02-02 | 2018-02-02 |  |  |  | 0d |  |  |  |  | 8h |  | 973 |  |
| 3 | 1.1.1 | Initial act |  | 1d | 2018-02-02 | 2018-02-02 |  |  |  | 0d |  | finish no earlier than 2018-02-02 | La Mexicana | Project Manager; Pen; Sheets; Transport; Computer (Wastage); Microsoft Office package; Chair (Wastage); Table (Wastage); Ink; Printer (Wastage) | 8h |  | 973 |  |
| 4 | 1.1.2 | **Initiation Milestone** |  | 0d | 2018-02-02 | 2018-02-02 |  |  |  |  |  |  |  |  |  |  |  |  |
| 5 | 1.1.2.1 | Initial act document | milestone, manual | 0d | 2018-02-02 | 2018-02-02 |  |  |  |  |  |  |  |  |  |  |  |  |
| 6 | 1.2 | **Planning** |  | 5.25d | 2018-02-06 A | 2018-02-13 | 2 | 16% | 4.42d | 0d |  |  |  |  | 38h | 6h | 4,626 | 678 |
| 7 | 1.2.1 | Budget worksheet |  | 1d | 2018-02-06 | 2018-02-06 | 3 |  |  | 0.38d | 0.12d | start no earlier than 2018-02-05 | La Mexicana | Project Manager; Chair (Wastage); Computer (Wastage); Microsoft Office package; Table (Wastage) | 8h |  | 935 |  |
| 8 | 1.2.2 | Deliverables |  | 4h | 2018-02-07 A | 2018-02-07 | 7 | 50% | 2h | 0d |  |  | La Mexicana | Project Manager; Computer (Wastage); Light; Chair (Wastage); Microsoft Office package; Table (Wastage) | 4h | 2h | 488 | 226 |
| 9 | 1.2.3 | Milestones |  | 4h | 2018-02-07 A | 2018-02-07 | 8 | 50% | 2h | 0.75d | 0.12d | start no earlier than 2018-02-06 | La Mexicana | Project Manager; Computer (Wastage); Light; Chair (Wastage); Table (Wastage); Microsoft Office package | 4h | 2h | 488 | 226 |
| 10 | 1.2.4 | Work Breakdown Structure (WBS) |  | 1d | 2018-02-08 | 2018-02-08 | 9 |  |  | 0.62d | 0.25d | finish no earlier than 2018-02-08 | La Mexicana | Project Manager; Computer (Wastage); Light; Chair (Wastage); Internet and telephone service; Microsoft Office package; Table (Wastage) | 8h |  | 953 |  |
| 11 | 1.2.5 | Communication Plan |  | 6h | 2018-02-09 | 2018-02-09 | 10 |  |  | 0.38d | 0d | finish no earlier than 2018-02-09 | La Mexicana | Project Manager; Computer (Wastage); Light; Chair (Wastage); Internet and telephone service; Microsoft Office package; Table (Wastage) | 6h |  | 727 |  |
| 12 | 1.2.6 | Tool for Quality Management |  | 4h | 2018-02-12 | 2018-02-12 | 11 |  |  | 0.38d | 0d | start no earlier than 2018-02-09 | La Mexicana | Project Manager; Computer (Wastage); Internet and telephone service; Light; Chair (Wastage); Microsoft Office package; Table (Wastage) | 4h |  | 501 |  |
| 13 | 1.2.7 | Scope statement |  | 2h | 2018-02-12 | 2018-02-12 | 12 |  |  | 0.38d | 0d | start no earlier than 2018-02-09 | La Mexicana | Project Manager; Computer (Wastage); Light; Chair (Wastage); Internet and telephone service; Microsoft Office package; Table (Wastage) | 2h |  | 275 |  |
| 14 | 1.2.8 | Life cycle selection |  | 2h | 2018-02-12 A | 2018-02-13 | 13 | 99% | 0h | 0d |  |  | La Mexicana | Project Manager; Computer (Wastage); Internet and telephone service; Light; Chair (Wastage); Table (Wastage) | 2h | 2h | 259 | 226 |
| 15 | 1.2.9 | **Planning Milestone** |  | 0d | 2018-02-06 | 2018-02-06 |  |  |  |  |  |  |  |  |  |  |  |  |
| 16 | 1.2.9.1 | Budget worksheet document | milestone, manual | 0d | 2018-02-06 | 2018-02-06 |  |  |  |  |  |  |  |  |  |  |  |  |
| 17 | 1.2.9.2 | Deliverables document | milestone, manual | 0d | 2018-02-06 | 2018-02-06 |  |  |  |  |  |  |  |  |  |  |  |  |
| 18 | 1.2.9.3 | Milestones document | milestone, manual | 0d | 2018-02-06 | 2018-02-06 |  |  |  |  |  |  |  |  |  |  |  |  |
| 19 | 1.2.9.4 | Activities breakdown document | milestone, manual | 0d | 2018-02-06 | 2018-02-06 |  |  |  |  |  |  |  |  |  |  |  |  |
| 20 | 1.2.9.5 | Communication plan document | milestone, manual | 0d | 2018-02-06 | 2018-02-06 |  |  |  |  |  |  |  |  |  |  |  |  |
| 21 | 1.2.9.6 | Tool for Quality Management document | milestone, manual | 0d | 2018-02-06 | 2018-02-06 |  |  |  |  |  |  |  |  |  |  |  |  |
| 22 | 1.2.9.7 | Scope and a life cycle selection document | milestone, manual | 0d | 2018-02-06 | 2018-02-06 |  |  |  |  |  |  |  |  |  |  |  |  |
| 23 | 1.3 | **Analysis** |  | 6d | 2018-02-13 | 2018-02-21 | 6 |  |  | 0d |  |  |  |  | 48h |  | 5,094 |  |
| 24 | 1.3.1 | Evaluate suppliers |  | 4h | 2018-02-13 | 2018-02-13 | 14 |  |  | 0d |  | start no earlier than 2018-02-09 | La Mexicana | Analyst; Chair (Wastage); Computer (Wastage); Microsoft Office package; Table (Wastage); Internet and telephone service; Light | 4h |  | 449 |  |
| 25 | 1.3.2 | Selection of data collection technique |  | 4h | 2018-02-13 | 2018-02-14 | 24 |  |  | 0d |  | start no earlier than 2018-02-09 | La Mexicana | Analyst; Computer (Wastage); Internet and telephone service; Light; Chair (Wastage); Table (Wastage); Microsoft Office package | 4h |  | 449 |  |
| 26 | 1.3.3 | Interview |  | 1d | 2018-02-14 | 2018-02-15 | 25 |  |  | 0d |  | start no earlier than 2018-02-09 | La Mexicana | Analyst; Computer (Wastage); Internet and telephone service; Light; Chair (Wastage); Table (Wastage); Microsoft Office package | 8h |  | 849 |  |

| ID | WBS | Task | Type | Duration | Start | Finish | Predecessors | Total slack | Free slack | Constraint | Calendar | Resources | Work | Cost |
| --- | --- | --- | --- | --- | --- | --- | --- | --- | --- | --- | --- | --- | --- | --- |
| 27 | 1.3.4 | **Definition of requirements** |  | 2d | 2018-02-15 | 2018-02-19 |  | 0d |  |  |  |  | 16h | 1,698 |
| 28 | 1.3.4.1 | Functional requirements |  | 1d | 2018-02-15 | 2018-02-16 | 26 | 0d |  | start no earlier than 2018-02-14 | La Mexicana | Analyst; Computer (Wastage); Light; Chair (Wastage); Table (Wastage); Microsoft Office package; Internet and telephone service | 8h | 849 |
| 29 | 1.3.4.2 | Non-functional requirements |  | 1d | 2018-02-16 | 2018-02-19 | 28 | 0d |  | start no earlier than 2018-02-09 | La Mexicana | Analyst; Computer (Wastage); Light; Chair (Wastage); Table (Wastage); Microsoft Office package; Internet and telephone service | 8h | 849 |
| 30 | 1.3.5 | Software Requirements Specification (SRS) |  | 2d | 2018-02-19 | 2018-02-21 | 29 | 0d |  | start no earlier than 2018-02-16 | La Mexicana | Analyst; Computer (Wastage); Light; Chair (Wastage); Table (Wastage); Microsoft Office package; Internet and telephone service | 16h | 1,649 |
| 31 | 1.3.6 | **Analysis Milestone** |  | 0d | 2018-02-13 | 2018-02-13 |  |  |  |  |  |  |  |  |
| 32 | 1.3.6.1 | Evaluation supplers document | milestone, manual | 0d | 2018-02-13 | 2018-02-13 |  |  |  |  |  |  |  |  |
| 33 | 1.3.6.2 | Selection of data collection technique document | milestone, manual | 0d | 2018-02-13 | 2018-02-13 |  |  |  |  |  |  |  |  |
| 34 | 1.3.6.3 | Interview document | milestone, manual | 0d | 2018-02-13 | 2018-02-13 |  |  |  |  |  |  |  |  |
| 35 | 1.3.6.4 | SRS document | milestone, manual | 0d | 2018-02-13 | 2018-02-13 |  |  |  |  |  |  |  |  |
| 36 | 1.4 | **Design** |  | 5d | 2018-02-21 | 2018-02-28 | 23 | 0d |  |  |  |  | 40h | 3,849 |
| 37 | 1.4.1 | **Database** |  | 2.25d | 2018-02-21 | 2018-02-23 |  | 0d |  |  |  |  | 20h | 1,917 |
| 38 | 1.4.1.1 | Entity-Relation diagram |  | 1.5d | 2018-02-21 | 2018-02-22 | 30 | 0d |  | start no earlier than 2018-02-19 | La Mexicana | Designer; Pen; Computer (Wastage); Sheets; Chair (Wastage); Table (Wastage) | 12h | 1,146.5 |
| 39 | 1.4.1.2 | Relational Diagram |  | 1d | 2018-02-22 | 2018-02-23 | 38 | 0d |  | finish no earlier than 2018-02-20 | La Mexicana | Designer; Computer (Wastage); Pen; Sheets; Chair (Wastage); Table (Wastage); SGBD | 8h | 770.5 |
| 40 | 1.4.2 | Navigation map |  | 4h | 2018-02-23 | 2018-02-26 | 39 | 0d |  |  | La Mexicana | Designer; Computer (Wastage); Light; Chair (Wastage); Table (Wastage) | 4h | 396 |
| 41 | 1.4.3 | Layout |  | 2d | 2018-02-26 | 2018-02-28 | 40 | 0d |  | start no earlier than 2018-02-22 | La Mexicana | Designer; Computer (Wastage); Chair (Wastage); Light; Table (Wastage); Adobe package | 16h | 1,536 |
| 42 | 1.4.4 | **Design Milestone** |  | 0d | 2018-02-21 | 2018-02-21 |  |  |  |  |  |  |  |  |
| 43 | 1.4.4.1 | Database diagrams document | milestone, manual | 0d | 2018-02-21 | 2018-02-21 |  |  |  |  |  |  |  |  |
| 44 | 1.4.4.2 | Navigation map document | milestone, manual | 0d | 2018-02-21 | 2018-02-21 |  |  |  |  |  |  |  |  |
| 45 | 1.4.4.3 | Layout images | milestone, manual | 0d | 2018-02-21 | 2018-02-21 |  |  |  |  |  |  |  |  |
| 46 | 1.5 | **Development** |  | 11d | 2018-02-28 | 2018-03-15 | 36 | 0d |  |  |  |  | 208h | 19,790 |
| 47 | 1.5.1 | Database |  | 2d | 2018-02-28 | 2018-03-02 | 41 | 10.62d | 0d | finish no earlier than 2018-03-01 | La Mexicana | Programmer2; Computer (Wastage); Light; Chair (Wastage); Internet and telephone service; Table (Wastage); SGBD | 16h | 1,537 |
| 48 | 1.5.2 | Layout |  | 2d | 2018-02-28 | 2018-03-02 | 41 | 10.62d | 0d | start no earlier than 2018-02-28 | La Mexicana | Programmer1; Chair (Wastage); Computer (Wastage); Internet and telephone service; Table (Wastage); Adobe package | 16h | 1,544 |
| 49 | 1.5.3 | **Web pages** |  | 9d | 2018-03-02 | 2018-03-15 |  | 11.75d |  |  |  |  | 176h | 16,709 |
| 50 | 1.5.3.1 | Conócenos |  | 3d | 2018-03-02 | 2018-03-07 | 47, 48 | 11.62d | 0d | start no earlier than 2018-03-02 | La Mexicana | Programmer3; Computer (Wastage); Internet and telephone service; Light; Chair (Wastage); Table (Wastage); IDE | 24h | 2,289 |
| 51 | 1.5.3.2 | Productos |  | 5d | 2018-03-07 | 2018-03-14 | 50 | 11.62d |  | finish no earlier than 2018-03-05 | La Mexicana | Programmer3; Computer (Wastage); Internet and telephone service; Light; Chair (Wastage); Table (Wastage); IDE | 40h | 3,793 |
| 52 | 1.5.3.3 | Platillos |  | 5d | 2018-03-02 | 2018-03-09 | 47, 48 | 10.62d | 0d | start no earlier than 2018-02-12 | La Mexicana | Programmer1; Computer (Wastage); Internet and telephone service; Light; Chair (Wastage); Table (Wastage); IDE | 40h | 3,793 |
| 53 | 1.5.3.4 | Pedidos |  | 5d | 2018-03-02 | 2018-03-09 | 47, 48 | 14.62d |  |  | La Mexicana | Programmer2; Computer (Wastage); Internet and telephone service; Light; Chair (Wastage); Table (Wastage); IDE | 40h | 3,793 |
| 54 | 1.5.3.5 | Index |  | 4d | 2018-03-09 | 2018-03-15 | 52 | 10.62d |  |  | La Mexicana | Programmer1; Computer (Wastage); Internet and telephone service; Light; Chair (Wastage); Table (Wastage); IDE | 32h | 3,041 |

| ID | WBS | Task | Type | Duration | Start | Finish | Predecessors | Total slack | Constraint | Calendar | Resources | Work | Cost |
| --- | --- | --- | --- | --- | --- | --- | --- | --- | --- | --- | --- | --- | --- |
| 55 | 1.5.4 | **Development Milestone** |  | 0d | 2018-02-28 | 2018-02-28 |  |  |  |  |  |  |  |
| 56 | 1.5.4.1 | Database file sql | milestone, manual | 0d | 2018-02-28 | 2018-02-28 |  |  |  |  |  |  |  |
| 57 | 1.5.4.2 | Layout files php, css and js | milestone, manual | 0d | 2018-02-28 | 2018-02-28 |  |  |  |  |  |  |  |
| 58 | 1.5.4.3 | Conócenos view, model and controller files | milestone, manual | 0d | 2018-02-28 | 2018-02-28 |  |  |  |  |  |  |  |
| 59 | 1.5.4.4 | Productos view, model and controller files | milestone, manual | 0d | 2018-02-28 | 2018-02-28 |  |  |  |  |  |  |  |
| 60 | 1.5.4.5 | Platillos view, model and controller files | milestone, manual | 0d | 2018-02-28 | 2018-02-28 |  |  |  |  |  |  |  |
| 61 | 1.5.4.6 | Pedidos view, model and controller files | milestone, manual | 0d | 2018-02-28 | 2018-02-28 |  |  |  |  |  |  |  |
| 62 | 1.5.4.7 | Index view, model and controller files | milestone, manual | 0d | 2018-02-28 | 2018-02-28 |  |  |  |  |  |  |  |
| 63 | 1.6 | **Tests** |  | 11d | 2018-03-09 | 2018-03-23 |  | 0d |  |  |  | 80h | 7,106 |
| 64 | 1.6.1 | Unit tests |  | 6d | 2018-03-09 | 2018-03-16 |  | 0d | finish no earlier than 2018-03-16 | La Mexicana | Tester; Computer (Wastage); Internet and telephone service; Light; Chair (Wastage); Table (Wastage); IDE | 48h | 4,257 |
| 65 | 1.6.2 | Module Tests |  | 4d | 2018-03-20 | 2018-03-23 | 64 | 0d | finish no earlier than 2018-03-23 | La Mexicana | Tester; Computer (Wastage); Internet and telephone service; Light; Chair (Wastage); Table (Wastage); IDE | 32h | 2,849 |
| 66 | 1.6.3 | **Test Milestone** |  | 0d | 2018-03-09 | 2018-03-09 |  |  |  |  |  |  |  |
| 67 | 1.6.3.1 | Test results document | milestone, manual | 0d | 2018-03-09 | 2018-03-09 |  |  |  |  |  |  |  |
| 68 | 1.7 | **Implementation** |  | 3d | 2018-04-02 | 2018-04-04 | 63 | 0d |  |  |  | 24h | 2,299 |
| 69 | 1.7.1 | Hosting selection |  | 1d | 2018-04-02 | 2018-04-02 | 65 | 0d | finish no earlier than 2018-04-02 | La Mexicana | Designer; Computer (Wastage); Internet and telephone service; Light; Chair (Wastage); Microsoft Office package; Table (Wastage) | 8h | 801 |
| 70 | 1.7.2 | Upload the application |  | 4h | 2018-04-03 | 2018-04-03 | 69 | 0d | start no earlier than 2018-04-02 | La Mexicana | Designer; Computer (Wastage); Internet and telephone service; Light; Chair (Wastage); Table (Wastage) | 4h | 409 |
| 71 | 1.7.3 | System tests |  | 1.5d | 2018-04-03 | 2018-04-04 | 70 | 0d | finish no earlier than 2018-04-04 | La Mexicana | Tester; Computer (Wastage); Internet and telephone service; Light; Chair (Wastage); Table (Wastage) | 12h | 1,089 |
| 72 | 1.7.4 | **Implementation milestone** |  | 0d | 2018-04-02 | 2018-04-02 |  |  |  |  |  |  |  |
| 73 | 1.7.4.1 | Hosting document | milestone, manual | 0d | 2018-04-02 | 2018-04-02 |  |  |  |  |  |  |  |
| 74 | 1.8 | **Project closure** |  | 2d | 2018-04-05 | 2018-04-06 | 68 | 0d |  |  |  | 15h | 1,957 |
| 75 | 1.8.1 | Acceptance letter |  | 1h | 2018-04-05 | 2018-04-05 | 71 | 0d | start no earlier than 2018-04-05 | La Mexicana | Project Manager; Pen; Sheets; Transport; Chair (Wastage); Computer (Wastage); Ink; Internet and telephone service; Microsoft Office package; Printer (Wastage); Table (Wastage) | 1h | 195 |
| 76 | 1.8.2 | Project closing act |  | 2h | 2018-04-05 | 2018-04-05 | 75 | 0d | start no earlier than 2018-04-05 | La Mexicana | Project Manager; Pen; Sheets; Transport; Chair (Wastage); Computer (Wastage); Ink; Internet and telephone service; Microsoft Office package; Printer (Wastage); Table (Wastage) | 2h | 308 |
| 77 | 1.8.3 | Lessons learned checklist |  | 5h | 2018-04-05 | 2018-04-06 | 76 | 0d | start no earlier than 2018-04-05 | La Mexicana | Project Manager; Computer (Wastage); Light; Chair (Wastage); Internet and telephone service; Microsoft Office package; Table (Wastage) | 5h | 614 |
| 78 | 1.8.4 | Lessons learned document |  | 7h | 2018-04-06 | 2018-04-06 | 77 | 0d | finish no earlier than 2018-04-06 | La Mexicana | Project Manager; Computer (Wastage); Light; Chair (Wastage); Internet and telephone service; Microsoft Office package; Table (Wastage) | 7h | 840 |

| ID | WBS | Task | Type | Duration | Start | Finish |
| --- | --- | --- | --- | --- | --- | --- |
| 79 | 1.8.5 | **Project closure milestone** |  | 0d | 2018-04-05 | 2018-04-05 |
| 80 | 1.8.5.1 | Acceptance letter document | milestone, manual | 0d | 2018-04-05 | 2018-04-05 |
| 81 | 1.8.5.2 | Project closing act document | milestone, manual | 0d | 2018-04-05 | 2018-04-05 |
| 82 | 1.8.5.3 | Lessons learned document | milestone, manual | 0d | 2018-04-05 | 2018-04-05 |
