# La-Mexicana4_RutaCritica

Schedule from MS Project, 2018-02-02 to 2018-04-06, costs in $, A marks actual dates.
Hewlett-Packard

## Calendars

- Estándar: Mon-Fri 09:00-13:00, 15:00-19:00; Sat-Sun off.
- La Mexicana: Mon-Fri 08:00-16:00; Sat-Sun off. Exceptions (off unless hours are given): 2018-02-05 (Día de la Constitución), 2018-03-19 (Natalicio de Benito Juárez), 2018-03-26 to 2018-03-31 (Semana Santa).

## Resources

| Resource | Rate |
| --- | --- |
| Project Manager | 113 |
| Analyst | 100 |
| Designer | 94 |
| Programmer3 | 94 |
| Tester | 88 |
| Programmer2 | 94 |
| Programmer1 | 94 |
| Luz | 5 |
| Computadora (Desgaste de equipo) | 8 |
| Hojas de papel | 1 |
| Bolígrafo | 3 |
| Transporte | 20 |
| Internet | 13 |
| Mobiliario (Desgaste) | 5 |
| Impresora |  |
| Jabón |  |
| Tinta |  |
| Espacio de trabajo/Escuela |  |
| Agua |  |
| Papel de baño |  |
| Lamparas |  |
| ventilador |  |
| Telefono |  |

## Schedule

| ID | WBS | Task | Type | Duration | Start | Finish | Predecessors | Complete | Remaining | Total slack | Free slack | Constraint | Calendar | Resources | Work | Actual work | Cost | Actual cost |
| --- | --- | --- | --- | --- | --- | --- | --- | --- | --- | --- | --- | --- | --- | --- | --- | --- | --- | --- |
| 1 | 1 | **La Mexicana** |  | 46d | 2018-02-02 A | 2018-04-06 |  | 1% | 45.4d | 0d |  |  |  |  | 463h | 6h | 44,455 | 678 |
| 2 | 1.1 | **Initiaton** |  | 1d | 2018-02-02 | 2018-02-02 |  |  |  | 0d |  |  |  |  | 8h |  | 904 |  |
| 3 | 1.1.1 | Initial act |  | 1d | 2018-02-02 | 2018-02-02 |  |  |  | 0d |  | finish no earlier than 2018-02-02 | La Mexicana | Project Manager | 8h |  | 904 |  |
| 4 | 1.1.2 | **Initiation Milestone** |  | 0d | 2018-02-02 | 2018-02-02 |  |  |  |  |  |  |  |  |  |  |  |  |
| 5 | 1.1.2.1 | Initial act document | milestone, manual | 0d | 2018-02-02 | 2018-02-02 |  |  |  |  |  |  |  |  |  |  |  |  |
| 6 | 1.2 | **Planning** |  | 5d | 2018-02-06 A | 2018-02-13 | 2 | 15% | 4.25d | 0d |  |  |  |  | 40h | 6h | 4,520 | 678 |
| 7 | 1.2.1 | Budget worksheet |  | 1d | 2018-02-06 | 2018-02-06 | 3 |  |  | 0.38d | 0.12d | start no earlier than 2018-02-05 | La Mexicana | Project Manager | 8h |  | 904 |  |
| 8 | 1.2.2 | Deliverables |  | 4h | 2018-02-07 A | 2018-02-07 | 7 | 50% | 2h | 0d |  |  | La Mexicana | Project Manager | 4h | 2h | 452 | 226 |
| 9 | 1.2.3 | Milestones |  | 4h | 2018-02-07 A | 2018-02-07 | 8 | 50% | 2h | 0.5d | 0.25d | start no earlier than 2018-02-06 | La Mexicana | Project Manager | 4h | 2h | 452 | 226 |
| 10 | 1.2.4 | Work Breakdown Structure (WBS) |  | 1d | 2018-02-08 | 2018-02-09 | 9 |  |  | 0.25d |  | start no earlier than 2018-02-08 | La Mexicana | Project Manager | 8h |  | 904 |  |
| 11 | 1.2.5 | Communication Plan |  | 5h | 2018-02-09 | 2018-02-09 | 10 |  |  | 0d |  | finish no earlier than 2018-02-09 | La Mexicana | Project Manager | 5h |  | 565 |  |
| 12 | 1.2.6 | Quality Plan |  | 6h | 2018-02-12 | 2018-02-12 | 11 |  |  | 0d |  | finish no earlier than 2018-02-08 | La Mexicana | Project Manager | 6h |  | 678 |  |
| 13 | 1.2.7 | Scope statement |  | 3h | 2018-02-12 | 2018-02-13 | 12 |  |  | -2.12d | 0d | start no earlier than 2018-02-09 | La Mexicana | Project Manager | 3h |  | 339 |  |
| 14 | 1.2.8 | Life cycle selection |  | 2h | 2018-02-12 A | 2018-02-12 A | 13 | 100% |  |  |  |  | La Mexicana | Project Manager | 2h | 2h | 226 | 226 |
| 15 | 1.2.9 | **Planning Milestone** |  | 0d | 2018-02-06 | 2018-02-06 |  |  |  |  |  |  |  |  |  |  |  |  |
| 16 | 1.2.9.1 | Budget worksheet document | milestone, manual | 0d | 2018-02-06 | 2018-02-06 |  |  |  |  |  |  |  |  |  |  |  |  |
| 17 | 1.2.9.2 | Deliverables document | milestone, manual | 0d | 2018-02-06 | 2018-02-06 |  |  |  |  |  |  |  |  |  |  |  |  |
| 18 | 1.2.9.3 | Milestones document | milestone, manual | 0d | 2018-02-06 | 2018-02-06 |  |  |  |  |  |  |  |  |  |  |  |  |
| 19 | 1.2.9.4 | Activities breakdown document | milestone, manual | 0d | 2018-02-06 | 2018-02-06 |  |  |  |  |  |  |  |  |  |  |  |  |
| 20 | 1.2.9.5 | Communication plan document | milestone, manual | 0d | 2018-02-06 | 2018-02-06 |  |  |  |  |  |  |  |  |  |  |  |  |
| 21 | 1.2.9.6 | Quality plan document | milestone, manual | 0d | 2018-02-06 | 2018-02-06 |  |  |  |  |  |  |  |  |  |  |  |  |
| 22 | 1.2.9.7 | Scope and a life cycle selection document | milestone, manual | 0d | 2018-02-06 | 2018-02-06 |  |  |  |  |  |  |  |  |  |  |  |  |
| 23 | 1.3 | **Analysis** |  | 6d | 2018-02-13 | 2018-02-21 | 6 |  |  | 0d |  |  |  |  | 48h |  | 4,800 |  |
| 24 | 1.3.1 | Evaluate requirements suppliers |  | 4h | 2018-02-13 | 2018-02-13 | 14 |  |  | -2.12d | 0d | start no earlier than 2018-02-09 | La Mexicana | Analyst | 4h |  | 400 |  |
| 25 | 1.3.2 | Selection of data collection technique |  | 4h | 2018-02-13 | 2018-02-14 | 24 |  |  | -2.12d | 0d | start no earlier than 2018-02-09 | La Mexicana | Analyst | 4h |  | 400 |  |
| 26 | 1.3.3 | Interview |  | 1d | 2018-02-14 | 2018-02-15 | 25 |  |  | -2.12d | 0d | start no earlier than 2018-02-09 | La Mexicana | Analyst | 8h |  | 800 |  |

| ID | WBS | Task | Type | Duration | Start | Finish | Predecessors | Total slack | Free slack | Constraint | Calendar | Resources | Work | Cost |
| --- | --- | --- | --- | --- | --- | --- | --- | --- | --- | --- | --- | --- | --- | --- |
| 27 | 1.3.4 | **Definition of requirements** |  | 2d | 2018-02-15 | 2018-02-19 |  | 0d |  |  |  |  | 16h | 1,600 |
| 28 | 1.3.4.1 | Functional requirements |  | 1d | 2018-02-15 | 2018-02-16 | 26 | -2.12d | 0d | start no earlier than 2018-02-14 | La Mexicana | Analyst | 8h | 800 |
| 29 | 1.3.4.2 | Non-functional requirements |  | 1d | 2018-02-16 | 2018-02-19 | 28 | -2.12d | 0d | start no earlier than 2018-02-09 | La Mexicana | Analyst | 8h | 800 |
| 30 | 1.3.5 | Software Requirements Specification (SRS) |  | 2d | 2018-02-19 | 2018-02-21 | 29 | -2.12d | 0d | start no earlier than 2018-02-16 | La Mexicana | Analyst | 16h | 1,600 |
| 31 | 1.3.6 | **Analysis Milestone** |  | 0d | 2018-02-13 | 2018-02-13 |  |  |  |  |  |  |  |  |
| 32 | 1.3.6.1 | Evaluation requirements supplers document | milestone, manual | 0d | 2018-02-13 | 2018-02-13 |  |  |  |  |  |  |  |  |
| 33 | 1.3.6.2 | Selection of data collection technique document | milestone, manual | 0d | 2018-02-13 | 2018-02-13 |  |  |  |  |  |  |  |  |
| 34 | 1.3.6.3 | Interview document | milestone, manual | 0d | 2018-02-13 | 2018-02-13 |  |  |  |  |  |  |  |  |
| 35 | 1.3.6.4 | SRS document | milestone, manual | 0d | 2018-02-13 | 2018-02-13 |  |  |  |  |  |  |  |  |
| 36 | 1.4 | **Design** |  | 5d | 2018-02-21 | 2018-02-28 | 23 | 0d |  |  |  |  | 40h | 3,760 |
| 37 | 1.4.1 | **Database** |  | 2.5d | 2018-02-21 | 2018-02-23 |  | 0d |  |  |  |  | 20h | 1,880 |
| 38 | 1.4.1.1 | Entity-Relation diagram |  | 1.5d | 2018-02-21 | 2018-02-22 | 30 | -2.12d | 0d | start no earlier than 2018-02-19 | La Mexicana | Designer | 12h | 1,128 |
| 39 | 1.4.1.2 | Relational Diagram |  | 1d | 2018-02-22 | 2018-02-23 | 38 | -2.12d | 0d | finish no earlier than 2018-02-20 | La Mexicana | Designer | 8h | 752 |
| 40 | 1.4.2 | Navigation map |  | 4h | 2018-02-23 | 2018-02-26 | 39 | -2.12d | 0d |  | La Mexicana | Designer | 4h | 376 |
| 41 | 1.4.3 | Layout |  | 2d | 2018-02-26 | 2018-02-28 | 40 | -2.12d | 0d | start no earlier than 2018-02-22 | La Mexicana | Designer | 16h | 1,504 |
| 42 | 1.4.4 | **Design Milestone** |  | 0d | 2018-02-21 | 2018-02-21 |  |  |  |  |  |  |  |  |
| 43 | 1.4.4.1 | Database diagrams document | milestone, manual | 0d | 2018-02-21 | 2018-02-21 |  |  |  |  |  |  |  |  |
| 44 | 1.4.4.2 | Navigation map document | milestone, manual | 0d | 2018-02-21 | 2018-02-21 |  |  |  |  |  |  |  |  |
| 45 | 1.4.4.3 | Layout images | milestone, manual | 0d | 2018-02-21 | 2018-02-21 |  |  |  |  |  |  |  |  |
| 46 | 1.5 | **Development** |  | 11d | 2018-02-28 | 2018-03-15 | 36 | 0d |  |  |  |  | 208h | 19,552 |
| 47 | 1.5.1 | Database |  | 2d | 2018-02-28 | 2018-03-02 | 41 | 10.88d | 0d | finish no earlier than 2018-03-01 | La Mexicana | Programmer2 | 16h | 1,504 |
| 48 | 1.5.2 | Layout |  | 2d | 2018-02-28 | 2018-03-02 | 41 | 10.88d | 0d | start no earlier than 2018-02-28 | La Mexicana | Programmer1 | 16h | 1,504 |
| 49 | 1.5.3 | **Web pages** |  | 9d | 2018-03-02 | 2018-03-15 |  | 12d |  |  |  |  | 176h | 16,544 |
| 50 | 1.5.3.1 | Conócenos |  | 3d | 2018-03-02 | 2018-03-07 | 47, 48 | 11.88d | 0d | start no earlier than 2018-03-02 | La Mexicana | Programmer3 | 24h | 2,256 |
| 51 | 1.5.3.2 | Productos |  | 5d | 2018-03-07 | 2018-03-14 | 50 | 11d |  | finish no earlier than 2018-03-05 | La Mexicana | Programmer3 | 40h | 3,760 |
| 52 | 1.5.3.3 | Platillos |  | 5d | 2018-03-02 | 2018-03-09 | 47, 48 | 10.88d | 0d | start no earlier than 2018-02-12 | La Mexicana | Programmer1 | 40h | 3,760 |
| 53 | 1.5.3.4 | Pedidos |  | 5d | 2018-03-02 | 2018-03-09 | 47, 48 | 14.88d |  |  | La Mexicana | Programmer2 | 40h | 3,760 |
| 54 | 1.5.3.5 | Index |  | 4d | 2018-03-09 | 2018-03-15 | 52 | 10.88d |  |  | La Mexicana | Programmer1 | 32h | 3,008 |

| ID | WBS | Task | Type | Duration | Start | Finish | Predecessors | Total slack | Free slack | Constraint | Calendar | Resources | Work | Cost |
| --- | --- | --- | --- | --- | --- | --- | --- | --- | --- | --- | --- | --- | --- | --- |
| 55 | 1.5.4 | **Development Milestone** |  | 0d | 2018-02-28 | 2018-02-28 |  |  |  |  |  |  |  |  |
| 56 | 1.5.4.1 | Database file sql | milestone, manual | 0d | 2018-02-28 | 2018-02-28 |  |  |  |  |  |  |  |  |
| 57 | 1.5.4.2 | Layout files php, css and js | milestone, manual | 0d | 2018-02-28 | 2018-02-28 |  |  |  |  |  |  |  |  |
| 58 | 1.5.4.3 | Conócenos view, model and controller files | milestone, manual | 0d | 2018-02-28 | 2018-02-28 |  |  |  |  |  |  |  |  |
| 59 | 1.5.4.4 | Productos view, model and controller files | milestone, manual | 0d | 2018-02-28 | 2018-02-28 |  |  |  |  |  |  |  |  |
| 60 | 1.5.4.5 | Platillos view, model and controller files | milestone, manual | 0d | 2018-02-28 | 2018-02-28 |  |  |  |  |  |  |  |  |
| 61 | 1.5.4.6 | Pedidos view, model and controller files | milestone, manual | 0d | 2018-02-28 | 2018-02-28 |  |  |  |  |  |  |  |  |
| 62 | 1.5.4.7 | Index view, model and controller files | milestone, manual | 0d | 2018-02-28 | 2018-02-28 |  |  |  |  |  |  |  |  |
| 63 | 1.6 | **Tests** |  | 11d | 2018-03-09 | 2018-03-23 |  | 0d |  |  |  |  | 80h | 7,040 |
| 64 | 1.6.1 | Unit tests |  | 6d | 2018-03-09 | 2018-03-16 |  | 0d |  | finish no earlier than 2018-03-16 | La Mexicana | Tester | 48h | 4,224 |
| 65 | 1.6.2 | Module Tests |  | 4d | 2018-03-20 | 2018-03-23 | 64 | 0d |  | finish no earlier than 2018-03-23 | La Mexicana | Tester | 32h | 2,816 |
| 66 | 1.6.3 | **Test Milestone** |  | 0d | 2018-03-09 | 2018-03-09 |  |  |  |  |  |  |  |  |
| 67 | 1.6.3.1 | Test results document | milestone, manual | 0d | 2018-03-09 | 2018-03-09 |  |  |  |  |  |  |  |  |
| 68 | 1.7 | **Implementation** |  | 3d | 2018-04-02 | 2018-04-04 | 63 | 0d |  |  |  |  | 24h | 2,184 |
| 69 | 1.7.1 | Hosting selection |  | 1d | 2018-04-02 | 2018-04-02 | 65 | 0.12d | 0d | finish no earlier than 2018-04-02 | La Mexicana | Designer | 8h | 752 |
| 70 | 1.7.2 | Upload the application |  | 4h | 2018-04-03 | 2018-04-03 | 69 | 0.12d | 0d | start no earlier than 2018-04-02 | La Mexicana | Designer | 4h | 376 |
| 71 | 1.7.3 | System tests |  | 1.5d | 2018-04-03 | 2018-04-04 | 70 | 0.12d |  | finish no earlier than 2018-04-04 | La Mexicana | Tester | 12h | 1,056 |
| 72 | 1.7.4 | **Implementation milestone** |  | 0d | 2018-04-02 | 2018-04-02 |  |  |  |  |  |  |  |  |
| 73 | 1.7.4.1 | Hosting document | milestone, manual | 0d | 2018-04-02 | 2018-04-02 |  |  |  |  |  |  |  |  |
| 74 | 1.8 | **Project closure** |  | 2d | 2018-04-05 | 2018-04-06 | 68 | 0d |  |  |  |  | 15h | 1,695 |
| 75 | 1.8.1 | Acceptance letter |  | 1h | 2018-04-05 | 2018-04-05 | 71 | 0d |  | start no earlier than 2018-04-05 | La Mexicana | Project Manager | 1h | 113 |
| 76 | 1.8.2 | Project closing act |  | 2h | 2018-04-05 | 2018-04-05 | 75 | 0d |  | start no earlier than 2018-04-05 | La Mexicana | Project Manager | 2h | 226 |
| 77 | 1.8.3 | Lessons learned checklist |  | 5h | 2018-04-05 | 2018-04-06 | 76 | 0d |  | finish no earlier than 2018-04-05 | La Mexicana | Project Manager | 5h | 565 |
| 78 | 1.8.4 | Lessons learned document |  | 7h | 2018-04-06 | 2018-04-06 | 77 | 0d |  | finish no earlier than 2018-04-06 | La Mexicana | Project Manager | 7h | 791 |

| ID | WBS | Task | Type | Duration | Start | Finish |
| --- | --- | --- | --- | --- | --- | --- |
| 79 | 1.8.5 | **Project closure milestone** |  | 0d | 2018-04-05 | 2018-04-05 |
| 80 | 1.8.5.1 | Acceptance letter document | milestone, manual | 0d | 2018-04-05 | 2018-04-05 |
| 81 | 1.8.5.2 | Project closing act document | milestone, manual | 0d | 2018-04-05 | 2018-04-05 |
| 82 | 1.8.5.3 | Lessons learned document | milestone, manual | 0d | 2018-04-05 | 2018-04-05 |
